# Cronograma Site Adoção Pets

How a schedule from MS Project changed from version to version. A marks actual dates.

## Version 1 (data date 2020-07-14, saved 2020-06-30)

Note of the change: Adicionado

| ID | WBS | Task | Duration | Start | Finish | Predecessors | Complete | Total float |
| --- | --- | --- | --- | --- | --- | --- | --- | --- |
| 1 | 1 | **Projeto Site Adoção de animais doméstico** | 40d? | 2020-05-20 09:00 A | 2020-07-14 18:00 |  | 51% |  |
| 2 | 1.1 | **Prospecção** | 1.12d? | 2020-05-20 09:00 A | 2020-05-21 10:00 A |  | 100% |  |
| 3 | 1.1.1 | **PTEC** | 0.62d? | 2020-05-20 09:00 A | 2020-05-20 15:00 A |  | 100% |  |
| 4 |  | Estudar domínio de aplicação | 0.12d | 2020-05-20 09:00 A | 2020-05-20 10:00 A |  | 100% |  |
| 5 |  | Reunir-se com fornecedor de requisítos | 0.12d | 2020-05-20 10:00 A | 2020-05-20 11:00 A | 4 | 100% |  |
| 6 |  | Redigir proposta técnica | 0.12d | 2020-05-20 11:00 A | 2020-05-20 12:00 A | 5 | 100% |  |
| 7 |  | Revisar proposta técnica | 0.12d | 2020-05-20 13:00 A | 2020-05-20 14:00 A | 6 | 100% |  |
| 8 |  | Aprovar PTEC | 0.12d? | 2020-05-20 14:00 A | 2020-05-20 15:00 A | 7 | 100% |  |
| 9 | 1.1.2 | **Est. Prel. Tam.** | 0.25d | 2020-05-20 15:00 A | 2020-05-20 17:00 A |  | 100% |  |
| 10 |  | Estimar tamanho do projeto | 0.12d | 2020-05-20 15:00 A | 2020-05-20 16:00 A | 8 | 100% |  |
| 11 |  | Revisar estimativa de tamanho do projeto | 0.12d | 2020-05-20 16:00 A | 2020-05-20 17:00 A | 10 | 100% |  |
| 12 | 1.1.3 | **Est. Prel. Cronograma e Orçamento** | 0.25d | 2020-05-20 17:00 A | 2020-05-21 10:00 A |  | 100% |  |
| 13 |  | Elaborar cronograma e orçamento preliminares | 0.12d | 2020-05-20 17:00 A | 2020-05-20 18:00 A | 11 | 100% |  |
| 14 |  | Revisar cronograma e orçamento preliminares | 0.12d | 2020-05-21 09:00 A | 2020-05-21 10:00 A | 13 | 100% |  |
| 15 | 1.2 | **Análise** | 3.75d | 2020-05-20 15:00 A | 2020-05-26 12:00 A |  | 100% |  |
| 16 | 1.2.1 | **Documento de requisitos** | 1.88d | 2020-05-20 15:00 A | 2020-05-22 14:00 A |  | 100% |  |
| 17 |  | Elaborar o documento de requisitos | 1d | 2020-05-20 15:00 A | 2020-05-21 15:00 A | 8 | 100% |  |
| 18 |  | Revisar docimento de requisitos | 0.62d | 2020-05-21 15:00 A | 2020-05-22 11:00 A | 17 | 100% |  |
| 19 |  | Submeter DRE | 0.25d | 2020-05-22 11:00 A | 2020-05-22 14:00 A | 18 | 100% |  |
| 20 | 1.2.2 | **MRB** | 1.88d | 2020-05-22 14:00 A | 2020-05-26 12:00 A |  | 100% |  |
| 21 |  | Elaborar MRB | 1.25d | 2020-05-22 14:00 A | 2020-05-25 16:00 A | 19 | 100% |  |
| 22 |  | Revisar | 0.62d | 2020-05-25 16:00 A | 2020-05-26 12:00 A | 21 | 100% |  |
| 23 | 1.3 | **Projeto** | 1.12d? | 2020-05-26 13:00 A | 2020-05-27 14:00 A |  | 100% |  |
| 24 | 1.3.1 | **Diagrama de Classes** | 0.62d | 2020-05-26 13:00 A | 2020-05-26 18:00 A |  | 100% |  |
| 25 |  | Elaborar diagrama de classes | 0.25d | 2020-05-26 13:00 A | 2020-05-26 15:00 A | 22 | 100% |  |
| 26 |  | Revisar diagrama de classes | 0.25d | 2020-05-26 15:00 A | 2020-05-26 17:00 A | 25 | 100% |  |
| 27 |  | Atualizar MRB | 0.12d | 2020-05-26 17:00 A | 2020-05-26 18:00 A | 26 | 100% |  |
| 28 | 1.3.2 | **Modelo Entidade Relacionamento** | 0.5d? | 2020-05-27 09:00 A | 2020-05-27 14:00 A |  | 100% |  |
| 29 |  | Elaborar MER | 0.25d | 2020-05-27 09:00 A | 2020-05-27 11:00 A | 27 | 100% |  |
| 30 |  | Revisar MER | 0.25d? | 2020-05-27 11:00 A | 2020-05-27 14:00 A | 29 | 100% |  |
| 31 | 1.4 | **Planejamento** | 1.88d | 2020-05-27 14:00 A | 2020-05-29 12:00 A |  | 100% |  |
| 32 |  | Divisão dos times de desenvolvimento | 0.25d | 2020-05-27 14:00 A | 2020-05-27 16:00 A | 30 | 100% |  |
| 33 |  | Definir linguagem/frameworks a serem utilizados | 0.25d | 2020-05-27 16:00 A | 2020-05-27 18:00 A | 32 | 100% |  |
| 34 | 1.4.3 | **Definir padrão de interface e usabilidade** | 0.5d | 2020-05-28 09:00 A | 2020-05-28 14:00 A |  | 100% |  |
| 35 |  | Montar Mockup de interface | 0.25d | 2020-05-28 09:00 A | 2020-05-28 11:00 A | 33 | 100% |  |
| 36 |  | Aprovar Interface | 0.25d | 2020-05-28 11:00 A | 2020-05-28 14:00 A | 35 | 100% |  |
| 37 | 1.4.4 | **Iniciar repositório para controle de versionamento** | 0.88d | 2020-05-28 14:00 A | 2020-05-29 12:00 A |  | 100% |  |
| 38 |  | Divisão das equipes de desenvolvimento | 0.38d | 2020-05-28 14:00 A | 2020-05-28 17:00 A | 36 | 100% |  |
| 39 |  | Definir linguagem/frameworks a serem utilizados | 0.5d | 2020-05-28 17:00 A | 2020-05-29 12:00 A | 38 | 100% |  |
| 40 | 1.5 | **Implementação** | 15.25d | 2020-05-29 13:00 A | 2020-06-19 15:00 |  | 35% | 14.38d |
| 41 | 1.5.1 | **Realese 01** | 5.38d | 2020-05-29 13:00 A | 2020-06-05 16:00 A |  | 100% |  |
| 42 |  | Implementar [RFS01] | 0.62d | 2020-05-29 13:00 A | 2020-05-29 18:00 A | 39 | 100% |  |
| 43 |  | Implementar [RFS02] | 0.62d | 2020-06-01 09:00 A | 2020-06-01 15:00 A | 42 | 100% |  |
| 44 |  | Implementar [RFS03] | 0.62d | 2020-06-01 15:00 A | 2020-06-02 11:00 A | 43 | 100% |  |
| 45 |  | Implementar [RFS04] | 0.62d | 2020-06-02 11:00 A | 2020-06-02 17:00 A | 44 | 100% |  |
| 46 |  | Implementar [RFS05] | 0.62d | 2020-06-02 17:00 A | 2020-06-03 14:00 A | 45 | 100% |  |
| 47 |  | Implementar [RFS06] | 0.62d | 2020-06-03 14:00 A | 2020-06-04 10:00 A | 46 | 100% |  |
| 48 |  | Implementar [RFS07] | 0.62d | 2020-06-04 10:00 A | 2020-06-04 16:00 A | 47 | 100% |  |
| 49 |  | Implementar [RFS08] | 1d | 2020-06-04 16:00 A | 2020-06-05 16:00 A | 48 | 100% |  |
| 50 | 1.5.2 | **Realese 02** | 3.75d | 2020-06-05 16:00 | 2020-06-11 14:00 |  |  | 14.38d |
| 51 |  | Implementar [RFS09] | 0.62d | 2020-06-05 16:00 | 2020-06-08 12:00 | 49 |  | 14.38d |
| 52 |  | Implementar [RFS10] | 0.62d | 2020-06-08 13:00 | 2020-06-08 18:00 | 51 |  | 14.38d |
| 53 |  | Implementar [RFS11] | 0.62d | 2020-06-09 09:00 | 2020-06-09 15:00 | 52 |  | 14.38d |
| 54 |  | Implementar [RFS12] | 0.62d | 2020-06-09 15:00 | 2020-06-10 11:00 | 53 |  | 14.38d |
| 55 |  | Implementar [RFS13] | 0.62d | 2020-06-10 11:00 | 2020-06-10 17:00 | 54 |  | 14.38d |
| 56 |  | Implementar [RFS14] | 0.62d | 2020-06-10 17:00 | 2020-06-11 14:00 | 55 |  | 14.38d |
| 57 | 1.5.3 | **Realese 03** | 6.12d | 2020-06-11 14:00 | 2020-06-19 15:00 |  |  | 14.38d |
| 58 |  | Implementar [RFS15] | 0.62d | 2020-06-11 14:00 | 2020-06-12 10:00 | 56 |  | 14.38d |
| 59 |  | Implementar [RFS16] | 0.62d | 2020-06-12 10:00 | 2020-06-12 16:00 | 58 |  | 14.38d |
| 60 |  | Implementar [RFS17] | 0.62d | 2020-06-12 16:00 | 2020-06-15 12:00 | 59 |  | 14.38d |
| 61 |  | Implementar [RFS18] | 0.62d | 2020-06-15 13:00 | 2020-06-15 18:00 | 60 |  | 14.38d |
| 62 |  | Implementar [RFS19] | 0.62d | 2020-06-16 09:00 | 2020-06-16 15:00 | 61 |  | 14.38d |
| 63 |  | Implementar [RFS20] | 1d | 2020-06-16 15:00 | 2020-06-17 15:00 | 62 |  | 14.38d |
| 64 |  | Implementar [RFS21] | 1d | 2020-06-17 15:00 | 2020-06-18 15:00 | 63 |  | 14.38d |
| 65 |  | Implementar [RFS22] | 1d | 2020-06-18 15:00 | 2020-06-19 15:00 | 64 |  | 14.38d |
| 66 |  | Monitoramento e controle | 1d | 2020-06-19 15:00 | 2020-06-22 15:00 | 65 |  | 6.12d |
| 67 |  | Fechamento | 1d | 2020-06-22 15:00 | 2020-06-23 15:00 | 66 |  | 6.12d |
| 68 |  | Controle de mudanças | 1d | 2020-06-23 15:00 | 2020-06-24 15:00 | 67 |  | 6.12d |

## Version 2 (data date 2020-07-14, saved 2020-07-06)

Note of the change: atualizado branch-edit1

Last finish stays 2020-07-14.

Changed:

| ID | Task | Start | Finish | Duration | Complete | Total float | Predecessors | Other |
| --- | --- | --- | --- | --- | --- | --- | --- | --- |
| 1 | **Projeto Site Adoção de animais doméstico** |  |  |  | 51% → 49% |  |  |  |
| 40 | **Implementação** |  | 2020-06-19 15:00 → 2020-06-22 12:00 (+3d) | 15.25d → 16d | 35% → 34% | 14.38d → 13.62d |  |  |
| 50 | **Realese 02** |  | 2020-06-11 14:00 → 2020-06-15 14:00 (+4d) | 3.75d → 5.75d |  | 14.38d → 13.62d |  |  |
| 57 | Implementar [RFS16] | 2020-06-12 10:00 → 2020-06-11 14:00 (-1d) | 2020-06-12 16:00 → 2020-06-12 14:00 | 0.62d → 1d |  | 14.38d → 13.62d | 58 → 56 | resources Luis Eduardo → Wallan; baseline start 2020-06-16 15:00 → none; baseline finish 2020-06-17 11:00 → none |
| 58 | Implementar [RFS15] | 2020-06-11 14:00 → 2020-06-12 14:00 (+1d) | 2020-06-12 10:00 → 2020-06-15 14:00 (+3d) | 0.62d → 1d |  | 14.38d → 13.62d | 56 → 57 | resources Luis Eduardo → Wallan; baseline start 2020-06-16 09:00 → none; baseline finish 2020-06-16 15:00 → none |
| 59 | **Realese 03** | 2020-06-11 14:00 → 2020-06-15 14:00 (+4d) | 2020-06-19 15:00 → 2020-06-22 12:00 (+3d) | 6.12d → 4.88d |  | 14.38d → 13.62d |  |  |
| 60 | Implementar [RFS17] | 2020-06-12 16:00 → 2020-06-15 14:00 (+3d) | 2020-06-15 12:00 → 2020-06-16 10:00 (+1d) |  |  | 14.38d → 13.62d | 57 → 58 |  |
| 61 | Implementar [RFS18] | 2020-06-15 13:00 → 2020-06-16 10:00 (+1d) | 2020-06-15 18:00 → 2020-06-16 16:00 (+1d) |  |  | 14.38d → 13.62d |  |  |
| 62 | Implementar [RFS19] | 2020-06-16 09:00 → 2020-06-16 16:00 | 2020-06-16 15:00 → 2020-06-17 12:00 (+1d) |  |  | 14.38d → 13.62d |  |  |
| 63 | Implementar [RFS20] | 2020-06-16 15:00 → 2020-06-17 13:00 (+1d) | 2020-06-17 15:00 → 2020-06-18 12:00 (+1d) |  |  | 14.38d → 13.62d |  |  |
| 64 | Implementar [RFS21] | 2020-06-17 15:00 → 2020-06-18 13:00 (+1d) | 2020-06-18 15:00 → 2020-06-19 12:00 (+1d) |  |  | 14.38d → 13.62d |  |  |
| 65 | Implementar [RFS22] | 2020-06-18 15:00 → 2020-06-19 13:00 (+1d) | 2020-06-19 15:00 → 2020-06-22 12:00 (+3d) |  |  | 14.38d → 13.62d |  |  |
| 66 | Monitoramento e controle | 2020-06-19 15:00 → 2020-06-22 13:00 (+3d) | 2020-06-22 15:00 → 2020-06-23 12:00 (+1d) |  |  | 6.12d → 13.62d |  |  |
| 67 | Fechamento | 2020-06-22 15:00 → 2020-06-23 13:00 (+1d) | 2020-06-23 15:00 → 2020-06-24 12:00 (+1d) |  |  | 6.12d → 13.62d |  |  |
| 68 | Controle de mudanças | 2020-06-23 15:00 → 2020-06-24 13:00 (+1d) | 2020-06-24 15:00 → 2020-06-25 12:00 (+1d) |  |  | 6.12d → 13.62d |  |  |

## Version 3 (data date 2020-07-14, saved 2020-07-09)

Note of the change: Release02 Adicionada

Last finish stays 2020-07-14. Complete tasks 33 → 41.

Added:

| ID | Task | Duration | Start | Finish | Predecessors | Resources |
| --- | --- | --- | --- | --- | --- | --- |
| 66 | Implementar [RFS23] | 1d | 2020-06-22 13:00 | 2020-06-23 12:00 | 65 | Luis Eduardo |
| 67 | Implementar [RFS24] | 1d | 2020-06-23 13:00 | 2020-06-24 12:00 | 66 | Luis Eduardo |

Changed:

| ID | Task | Start | Finish | Duration | Complete | Total float | Predecessors | Other |
| --- | --- | --- | --- | --- | --- | --- | --- | --- |
| 1 | **Projeto Site Adoção de animais doméstico** |  |  |  | 49% → 66% |  |  |  |
| 40 | **Implementação** |  | 2020-06-22 12:00 → 2020-06-24 12:00 (+2d) | 16d → 18d | 34% → 62% | 13.62d → 11.62d |  |  |
| 50 | **Realese 02** | 2020-06-05 16:00 A | 2020-06-15 14:00 A |  | 0% → 100% | 13.62d → none |  |  |
| 51 | Implementar [RFS09] | 2020-06-05 16:00 A | 2020-06-08 12:00 A |  | 0% → 100% | 14.38d → none |  |  |
| 52 | Implementar [RFS10] | 2020-06-08 13:00 A | 2020-06-08 18:00 A |  | 0% → 100% | 13.62d → none |  |  |
| 53 | Implementar [RFS11] | 2020-06-09 09:00 A | 2020-06-09 15:00 A |  | 0% → 100% | 13.62d → none |  |  |
| 54 | Implementar [RFS12] | 2020-06-09 15:00 A | 2020-06-10 11:00 A |  | 0% → 100% | 14.38d → none |  |  |
| 55 | Implementar [RFS13] | 2020-06-10 11:00 A | 2020-06-10 17:00 A |  | 0% → 100% | 14.38d → none |  |  |
| 56 | Implementar [RFS14] | 2020-06-10 17:00 A | 2020-06-11 14:00 A |  | 0% → 100% | 14.38d → none |  |  |
| 57 | Implementar [RFS16] | 2020-06-11 14:00 A | 2020-06-12 14:00 A |  | 0% → 100% | 13.62d → none |  |  |
| 58 | Implementar [RFS15] | 2020-06-12 14:00 A | 2020-06-15 14:00 A |  | 0% → 100% | 13.62d → none |  |  |
| 59 | **Realese 03** |  | 2020-06-22 12:00 → 2020-06-24 12:00 (+2d) | 4.88d → 6.88d |  | 13.62d → 11.62d |  |  |
| 68 | Monitoramento e controle | 2020-06-22 13:00 → 2020-06-24 13:00 (+2d) | 2020-06-23 12:00 → 2020-06-25 12:00 (+2d) |  |  | 13.62d → 11.62d | 65 → 67 |  |
| 69 | Fechamento | 2020-06-23 13:00 → 2020-06-25 13:00 (+2d) | 2020-06-24 12:00 → 2020-06-26 12:00 (+2d) |  |  | 13.62d → 11.62d |  | resources Luis Eduardo → Carlos |
| 70 | Controle de mudanças | 2020-06-24 13:00 → 2020-06-26 13:00 (+2d) | 2020-06-25 12:00 → 2020-06-29 12:00 (+4d) |  |  | 13.62d → 11.62d |  | resources Luis Eduardo → Carlos |

## Version 4 (data date 2020-07-14, saved 2020-07-13)

Note of the change: Atualizado

Last finish 2020-07-14 → 2020-06-29 (-15d). Complete tasks 41 → 49.

Changed:

| ID | Task | Start | Finish | Duration | Complete | Total float |
| --- | --- | --- | --- | --- | --- | --- |
| 1 | **Projeto Site Adoção de animais doméstico** |  | 2020-07-14 18:00 → 2020-06-29 12:00 (-15d) | 40d? → 28.38d? | 66% → 90% | none → 0d |
| 40 | **Implementação** |  | 2020-06-24 12:00 A |  | 62% → 100% | 11.62d → none |
| 59 | **Realese 03** | 2020-06-15 14:00 A | 2020-06-24 12:00 A |  | 0% → 100% | 11.62d → none |
| 60 | Implementar [RFS17] | 2020-06-15 14:00 A | 2020-06-16 10:00 A |  | 0% → 100% | 13.62d → none |
| 61 | Implementar [RFS18] | 2020-06-16 10:00 A | 2020-06-16 16:00 A |  | 0% → 100% | 13.62d → none |
| 62 | Implementar [RFS19] | 2020-06-16 16:00 A | 2020-06-17 12:00 A |  | 0% → 100% | 13.62d → none |
| 63 | Implementar [RFS20] | 2020-06-17 13:00 A | 2020-06-18 12:00 A |  | 0% → 100% | 11.62d → none |
| 64 | Implementar [RFS21] | 2020-06-18 13:00 A | 2020-06-19 12:00 A |  | 0% → 100% | 11.62d → none |
| 65 | Implementar [RFS22] | 2020-06-19 13:00 A | 2020-06-22 12:00 A |  | 0% → 100% | 11.62d → none |
| 66 | Implementar [RFS23] | 2020-06-22 13:00 A | 2020-06-23 12:00 A |  | 0% → 100% | 11.62d → none |
| 67 | Implementar [RFS24] | 2020-06-23 13:00 A | 2020-06-24 12:00 A |  | 0% → 100% | 11.62d → none |
